# Fiktivt byggprosjekt – Leilighetsbygg Solsiden

How a schedule from MS Project changed from version to version. A marks actual dates.

## Version 1 (saved 2026-03-22, file gantt-plan-eksempel.mpp)

Note of the change: Endelig leveranse — LOG565 Prosjektledelse 2, Gruppe 4.5

| ID | WBS | Task | Duration | Start | Finish | Predecessors | Total float |
| --- | --- | --- | --- | --- | --- | --- | --- |
| 1 | 1.1 | **Forprosjekt og myndigheter** | 27d | 2026-04-06 | 2026-05-12 |  | 0d |
| 2 |  | Oppstartsmøte | 1d | 2026-04-06 | 2026-04-06 |  | 0d |
| 3 |  | Prosjektering | 10d | 2026-04-07 | 2026-04-20 | 2 | 0d |
| 4 |  | Bestille stål og takstoler | 4d | 2026-04-21 | 2026-04-24 | 3 | 17d |
| 5 |  | Levere stål og takstoler | 12d | 2026-04-27 | 2026-05-12 | 4 | 17d |
| 6 |  | Myndighetsbehandling | 15d | 2026-04-21 | 2026-05-11 | 3 | 0d |
| 7 |  | Igangsettingstillatelse | 0d | 2026-05-11 | 2026-05-11 | 6 | 0d |
| 8 | 1.2 | **Bygging råbygg** | 27d | 2026-05-12 | 2026-06-17 |  | 0d |
| 9 |  | Rigg og sikring | 3d | 2026-05-12 | 2026-05-14 | 7 | 0d |
| 10 |  | Graving byggegrop | 5d | 2026-05-15 | 2026-05-21 | 9 | 0d |
| 11 |  | Fundament/rebar/forskaling | 6d | 2026-05-19 | 2026-05-26 | 10SS+2d, 10FF | 0d |
| 12 |  | Støp fundament | 2d | 2026-05-27 | 2026-05-28 | 11 | 0d |
| 13 |  | Herdetid fundament | 5d | 2026-05-29 | 2026-06-04 | 12 | 0d |
| 14 |  | Montasje bæresystem | 8d | 2026-06-05 | 2026-06-16 | 13, 5 | 0d |
| 15 |  | Tak og klimaskjerm | 6d | 2026-06-10 | 2026-06-17 | 14SS+3d, 14FF | 0d |
| 16 |  | Fasade tett | 0d | 2026-06-17 | 2026-06-17 | 15 | 0d |
| 17 | 1.3 | **Tekniske fag og ferdigstillelse** | 30d | 2026-06-18 | 2026-07-29 |  | 0d |
| 18 |  | Råinstallasjoner VVS/elektro | 10d | 2026-06-18 | 2026-07-01 | 16 | 0d |
| 19 |  | Innvendige vegger | 7d | 2026-06-22 | 2026-06-30 | 18SS+2d | 0d |
| 20 |  | Himling og gulv | 8d | 2026-07-01 | 2026-07-10 | 19 | 0d |
| 21 |  | Overflatearbeider | 6d | 2026-07-13 | 2026-07-20 | 20 | 0d |
| 22 |  | FDV-dokumentasjon | 4d | 2026-07-22 | 2026-07-27 | 18, 23FF | 0d |
| 23 |  | Tester og idriftsettelse | 5d | 2026-07-21 | 2026-07-27 | 18, 21 | 0d |
| 24 |  | Sluttkontroll | 2d | 2026-07-28 | 2026-07-29 | 23, 22 | 0d |
| 25 |  | Overtakelse | 0d | 2026-07-29 | 2026-07-29 | 24 | 0d |
| 26 |  | Stenge midlertidig adkomst | 1d | 2026-07-29 | 2026-07-29 | 25SF | 0d |

## Version 2 (data date 2026-06-24, saved 2026-03-22, file gantt-tracking-mal.mpp)

Note of the change: Endelig leveranse — LOG565 Prosjektledelse 2, Gruppe 4.5

Last finish 2026-07-29 → 2026-08-12 (+14d). Complete tasks 0 → 11.

Changed:

| ID | Task | Start | Finish | Duration | Complete | Total float | Other |
| --- | --- | --- | --- | --- | --- | --- | --- |
| 1 | **Forprosjekt og myndigheter** | 2026-04-06 A | 2026-05-12 → 2026-05-15 A (+3d) | 27d → 30d | 0% → 100% | 0d → none | baseline start none → 2026-04-06; baseline finish none → 2026-05-12 |
| 2 | Oppstartsmøte | 2026-04-06 A | 2026-04-06 A |  | 0% → 100% | 0d → none | baseline start none → 2026-04-06; baseline finish none → 2026-04-06 |
| 3 | Prosjektering | 2026-04-07 A | 2026-04-20 → 2026-04-22 A (+2d) | 10d → 12d | 0% → 100% | 0d → none | baseline start none → 2026-04-07; baseline finish none → 2026-04-20 |
| 4 | Bestille stål og takstoler | 2026-04-21 → 2026-04-23 A (+2d) | 2026-04-24 → 2026-04-28 A (+4d) |  | 0% → 100% | 17d → none | baseline start none → 2026-04-21; baseline finish none → 2026-04-24 |
| 5 | Levere stål og takstoler | 2026-04-27 → 2026-04-29 A (+2d) | 2026-05-12 → 2026-05-15 A (+3d) | 12d → 13d | 0% → 100% | 17d → none | baseline start none → 2026-04-27; baseline finish none → 2026-05-12 |
| 6 | Myndighetsbehandling | 2026-04-21 → 2026-04-23 A (+2d) | 2026-05-11 → 2026-05-14 A (+3d) | 15d → 16d | 0% → 100% | 0d → none | baseline start none → 2026-04-21; baseline finish none → 2026-05-11 |
| 7 | Igangsettingstillatelse | 2026-05-11 → 2026-05-14 A (+3d) | 2026-05-11 → 2026-05-14 A (+3d) |  | 0% → 100% | 0d → none | baseline start none → 2026-05-11; baseline finish none → 2026-05-11 |
| 8 | **Bygging råbygg** | 2026-05-12 → 2026-05-15 A (+3d) | 2026-06-17 → 2026-07-01 (+14d) | 27d → 34d | 0% → 76% |  | baseline start none → 2026-05-12; baseline finish none → 2026-06-17 |
| 9 | Rigg og sikring | 2026-05-12 → 2026-05-15 A (+3d) | 2026-05-14 → 2026-05-19 A (+5d) |  | 0% → 100% | 0d → none | baseline start none → 2026-05-12; baseline finish none → 2026-05-14 |
| 10 | Graving byggegrop | 2026-05-15 → 2026-05-20 A (+5d) | 2026-05-21 → 2026-05-27 A (+6d) | 5d → 6d | 0% → 100% | 0d → none | baseline start none → 2026-05-15; baseline finish none → 2026-05-21 |
| 11 | Fundament/rebar/forskaling | 2026-05-19 → 2026-05-26 A (+7d) | 2026-05-26 → 2026-06-04 A (+9d) | 6d → 8d | 0% → 100% | 0d → none | baseline start none → 2026-05-19; baseline finish none → 2026-05-26 |
| 12 | Støp fundament | 2026-05-27 → 2026-06-05 A (+9d) | 2026-05-28 → 2026-06-08 A (+11d) |  | 0% → 100% | 0d → none | baseline start none → 2026-05-27; baseline finish none → 2026-05-28 |
| 13 | Herdetid fundament | 2026-05-29 → 2026-06-09 A (+11d) | 2026-06-04 → 2026-06-15 A (+11d) |  | 0% → 100% | 0d → none | baseline start none → 2026-05-29; baseline finish none → 2026-06-04 |
| 14 | Montasje bæresystem | 2026-06-05 → 2026-06-16 A (+11d) | 2026-06-16 → 2026-07-01 (+15d) | 8d → 12d | 0% → 58% |  | baseline start none → 2026-06-05; baseline finish none → 2026-06-16 |
| 15 | Tak og klimaskjerm | 2026-06-10 → 2026-06-24 A (+14d) | 2026-06-17 → 2026-07-01 (+14d) |  | 0% → 17% |  | baseline start none → 2026-06-10; baseline finish none → 2026-06-17 |
| 16 | Fasade tett | 2026-06-17 → 2026-07-01 (+14d) | 2026-06-17 → 2026-07-01 (+14d) |  |  |  | baseline start none → 2026-06-17; baseline finish none → 2026-06-17 |
| 17 | **Tekniske fag og ferdigstillelse** | 2026-06-18 → 2026-07-02 (+14d) | 2026-07-29 → 2026-08-12 (+14d) |  |  |  | baseline start none → 2026-06-18; baseline finish none → 2026-07-29 |
| 18 | Råinstallasjoner VVS/elektro | 2026-06-18 → 2026-07-02 (+14d) | 2026-07-01 → 2026-07-17 (+16d) | 10d → 12d |  |  | baseline start none → 2026-06-18; baseline finish none → 2026-07-01 |
| 19 | Innvendige vegger | 2026-06-22 → 2026-07-06 (+14d) | 2026-06-30 → 2026-07-14 (+14d) |  |  |  | baseline start none → 2026-06-22; baseline finish none → 2026-06-30 |
| 20 | Himling og gulv | 2026-07-01 → 2026-07-15 (+14d) | 2026-07-10 → 2026-07-24 (+14d) |  |  |  | baseline start none → 2026-07-01; baseline finish none → 2026-07-10 |
| 21 | Overflatearbeider | 2026-07-13 → 2026-07-27 (+14d) | 2026-07-20 → 2026-08-03 (+14d) |  |  |  | baseline start none → 2026-07-13; baseline finish none → 2026-07-20 |
| 22 | FDV-dokumentasjon | 2026-07-22 → 2026-08-05 (+14d) | 2026-07-27 → 2026-08-10 (+14d) |  |  |  | baseline start none → 2026-07-22; baseline finish none → 2026-07-27 |
| 23 | Tester og idriftsettelse | 2026-07-21 → 2026-08-04 (+14d) | 2026-07-27 → 2026-08-10 (+14d) |  |  |  | baseline start none → 2026-07-21; baseline finish none → 2026-07-27 |
| 24 | Sluttkontroll | 2026-07-28 → 2026-08-11 (+14d) | 2026-07-29 → 2026-08-12 (+14d) |  |  |  | baseline start none → 2026-07-28; baseline finish none → 2026-07-29 |
| 25 | Overtakelse | 2026-07-29 → 2026-08-12 (+14d) | 2026-07-29 → 2026-08-12 (+14d) |  |  |  | baseline start none → 2026-07-29; baseline finish none → 2026-07-29 |
| 26 | Stenge midlertidig adkomst | 2026-07-29 → 2026-08-12 (+14d) | 2026-07-29 → 2026-08-12 (+14d) |  |  |  | baseline start none → 2026-07-29; baseline finish none → 2026-07-29 |
